# Implantação WinThor ERP/WMS — Comercial Souza

Schedule from MS Project XML, 2025-10-13 to 2027-02-22, costs in R$, A marks actual dates.

## Calendars

- Padrão: Mon-Fri 09:00-12:00, 13:00-18:00; Sat-Sun off. Exceptions (off unless hours are given): 2026-11-01 09:00-12:00, 13:00-18:00.

## Resources

| Resource | Rate | Cost per use |
| --- | --- | --- |
| Eduardo Ramos | 150 | 70 |
| Romulo Silva | 150 | 70 |
| Luiz Leite | 150 | 70 |
| Marcos Pereira | 150 | 70 |
| James Rodrigues | 150 | 70 |
| Paulo Afonso | 150 | 70 |
| Comercial Souza | 150 | 70 |

## Schedule

| ID | WBS | Task | Type | Duration | Start | Finish | Complete | Remaining | Constraint | Deadline | Resources | Work | Actual work | Cost | Actual cost | %Conclusão |
| --- | --- | --- | --- | --- | --- | --- | --- | --- | --- | --- | --- | --- | --- | --- | --- | --- |
| 1 | 1 | **Projeto COMERCIAL SOUZA** |  | 357d? | 2025-10-13 A | 2026-12-04 | 64% | 109.53d? |  |  |  | 3448h | 2680h | 522,380 | 404,380 | 25 |
| 2 | 1.1 | **1. Planejamento, Abertura e Preparação do ERP Winthor** |  | 116d | 2025-10-13 A | 2026-03-23 | 98% | 2.4d |  | 2025-10-24 |  | 2168h | 2168h | 326,040 | 326,040 | 100 |
| 3 | 1.1.1 | Reunião de Abertura ERP | manual | 1d | 2025-10-13 A | 2025-10-13 A | 100% |  | start no earlier than 2019-07-22 |  | Eduardo Ramos | 8h | 8h | 1,270 | 1,270 | 100 |
| 4 | 1.1.2 | Levantamento de Processos e Aderências setores: Compras, Vendas, Financeiro, Faturamento, Expedição, Fiscal, Controladoria, TI, Logistica | manual | 3d | 2025-10-14 A | 2025-10-16 A | 100% |  | finish no earlier than 2019-07-25 |  | Eduardo Ramos | 24h | 24h | 3,670 | 3,670 | 100 |
| 5 | 1.1.3 | Instalação Winthor, NFE, WTA, CCW e testes Cloud | manual | 1d | 2025-10-13 A | 2025-10-13 A | 100% |  | finish no earlier than 2019-07-26 |  | Eduardo Ramos | 8h | 8h | 1,270 | 1,270 | 100 |
| 6 | 1.1.4 | Dúvidas e ajustes no processo de Migração | manual | 6d | 2025-10-13 A | 2025-10-20 A | 100% |  |  |  | Eduardo Ramos | 48h | 48h | 7,270 | 7,270 | 100 |
| 7 | 1.1.5 | Treinamento Parametrização Cadastros Winthor ERP | manual | 107d | 2025-10-13 A | 2026-03-10 A | 100% |  |  |  | Eduardo Ramos | 856h | 856h | 128,470 | 128,470 | 100 |
| 8 | 1.1.6 | **1.1. Cadastrar e validar parametrizações do ERP** |  | 106d | 2025-10-13 A | 2026-03-10 | 92% | 8.34d | finish no earlier than 2026-03-10 |  | Comercial Souza | 856h | 856h | 128,470 | 128,470 | 60 |
| 9 | 1.1.6.1 | **Governança, Segurança e Cadastros Gerais** |  | 1d | 2025-10-14 A | 2025-10-14 A | 100% |  |  |  |  |  |  |  |  |  |
| 10 | 1.1.6.1.1 | Rotina 535 — Cadastro de Filiais | manual | 1d | 2025-10-14 A | 2025-10-14 A | 100% |  |  |  |  |  |  |  |  |  |
| 11 | 1.1.6.1.2 | Rotina 528 — Cadastrar Setor/Funcionario | manual | 1d | 2025-10-14 A | 2025-10-14 A | 100% |  |  |  |  |  |  |  |  |  |
| 12 | 1.1.6.1.3 | Rotina 530 — Permitir Acesso a Rotina | manual | 1d | 2025-10-14 A | 2025-10-14 A | 100% |  |  |  |  |  |  |  |  |  |
| 13 | 1.1.6.1.4 | Rotina 131 — Permitir Acesso a Dados | manual | 1d | 2025-10-14 A | 2025-10-14 A | 100% |  |  |  |  |  |  |  |  |  |
| 14 | 1.1.6.1.5 | Rotina 532 — Cadastrar numeradores do sistemas | manual | 1d | 2025-10-14 A | 2025-10-14 A | 100% |  |  |  |  |  |  |  |  |  |
| 15 | 1.1.6.1.6 | Rotina 555 — Cadastrar Distribuicao | manual | 1d | 2025-10-14 A | 2025-10-14 A | 100% |  |  |  |  |  |  |  |  |  |
| 16 | 1.1.6.1.7 | Rotina 132 — Parametros da Presidencia | manual | 1d | 2025-10-14 A | 2025-10-14 A | 100% |  |  |  |  |  |  |  |  |  |
| 17 | 1.1.6.1.8 | Rotina 820 — Atualizacao Diaria | manual | 1d | 2025-10-14 A | 2025-10-14 A | 100% |  |  |  |  |  |  |  |  |  |
| 18 | 1.1.6.1.9 | Rotina 506 — Atualizacao Mensal | manual | 1d | 2025-10-14 A | 2025-10-14 A | 100% |  |  |  |  |  |  |  |  |  |
| 19 | 1.1.6.1.10 | Rotina 552 — Atualizacao Diaria II ( semanal ) | manual | 1d | 2025-10-14 A | 2025-10-14 A | 100% |  |  |  |  |  |  |  |  |  |
| 20 | 1.1.6.1.11 | Rotina 507 — Atualizacao Eventual | manual | 1d | 2025-10-14 A | 2025-10-14 A | 100% |  |  |  |  |  |  |  |  |  |
| 21 | 1.1.6.1.12 | Rotina 300, 1400, 500, 814 — Atualiz. funcoes e procedures | manual | 1d | 2025-10-14 A | 2025-10-14 A | 100% |  |  |  |  |  |  |  |  |  |
| 22 | 1.1.6.1.13 | DocFiscal — Monitoramento nota fiscal | manual | 1d | 2025-10-14 A | 2025-10-14 A | 100% |  |  |  |  |  |  |  |  |  |
| 23 | 1.1.6.1.14 | Autenticador — conceito e utilizacao | manual | 1d | 2025-10-14 A | 2025-10-14 A | 100% |  |  |  |  |  |  |  |  |  |
| 24 | 1.1.6.1.15 | CCW — Atualizacao das rotinas | manual | 1d | 2025-10-14 A | 2025-10-14 A | 100% |  |  |  |  |  |  |  |  |  |
| 25 | 1.1.6.1.16 | WTA — Winthor PCAnywhere | manual | 1d | 2025-10-14 A | 2025-10-14 A | 100% |  |  |  |  |  |  |  |  |  |

Notes:
- 1: Esta é uma tarefa de resumo. Use tarefas de resumo para ajudar a organizar seu projeto em seções.
- 9: Módulo consolidado a partir do Plano de Ação de Parametrização. 16 itens registrados.
- 10: Origem: Plano Ação Parametrização Coml Souza.xlsx, aba Página1, linha 3. / Utiliza: S / Migrar: N / Instrutor: Eduardo / Participantes: MATHEUS/JEFFERSON / Rotina liberada: OK / Observações: -
- 11: Origem: Plano Ação Parametrização Coml Souza.xlsx, aba Página1, linha 4. / Utiliza: S / Migrar: N / Instrutor: Eduardo / Participantes: MATHEUS/JEFFERSON / Rotina liberada: OK / Observações: -
- 12: Origem: Plano Ação Parametrização Coml Souza.xlsx, aba Página1, linha 5. / Utiliza: S / Migrar: N / Instrutor: Eduardo / Participantes: MATHEUS/JEFFERSON / Rotina liberada: OK / Observações: -
- 13: Origem: Plano Ação Parametrização Coml Souza.xlsx, aba Página1, linha 6. / Utiliza: S / Migrar: N / Instrutor: Eduardo / Participantes: MATHEUS/JEFFERSON / Rotina liberada: OK / Observações: -
- 14: Origem: Plano Ação Parametrização Coml Souza.xlsx, aba Página1, linha 7. / Utiliza: N / Migrar: N / Instrutor: Eduardo / Participantes: MATHEUS/JEFFERSON / Rotina liberada: OK / Observações: -
- 15: Origem: Plano Ação Parametrização Coml Souza.xlsx, aba Página1, linha 8. / Utiliza: N / Migrar: N / Instrutor: Eduardo / Participantes: MATHEUS/JEFFERSON / Rotina liberada: OK / Observações: -
- 16: Origem: Plano Ação Parametrização Coml Souza.xlsx, aba Página1, linha 9. / Utiliza: S / Migrar: N / Instrutor: Eduardo / Participantes: MATHEUS/JEFFERSON / Rotina liberada: OK / Observações: -
- 17: Origem: Plano Ação Parametrização Coml Souza.xlsx, aba Página1, linha 10. / Utiliza: S / Migrar: N / Instrutor: Eduardo / Participantes: MATHEUS/JEFFERSON / Rotina liberada: OK / Observações: -
- 18: Origem: Plano Ação Parametrização Coml Souza.xlsx, aba Página1, linha 11. / Utiliza: S / Migrar: N / Instrutor: Eduardo / Participantes: MATHEUS/JEFFERSON / Rotina liberada: OK / Observações: -
- 19: Origem: Plano Ação Parametrização Coml Souza.xlsx, aba Página1, linha 12. / Utiliza: S / Migrar: N / Instrutor: Eduardo / Participantes: MATHEUS/JEFFERSON / Rotina liberada: OK / Observações: -
- 20: Origem: Plano Ação Parametrização Coml Souza.xlsx, aba Página1, linha 13. / Utiliza: S / Migrar: N / Instrutor: Eduardo / Participantes: MATHEUS/JEFFERSON / Rotina liberada: OK / Observações: -
- 21: Origem: Plano Ação Parametrização Coml Souza.xlsx, aba Página1, linha 14. / Utiliza: S / Migrar: N / Instrutor: Eduardo / Participantes: MATHEUS/JEFFERSON / Rotina liberada: OK / Observações: -
- 22: Origem: Plano Ação Parametrização Coml Souza.xlsx, aba Página1, linha 15. / Utiliza: S / Migrar: N / Instrutor: Eduardo / Participantes: MATHEUS/JEFFERSON / Rotina liberada: OK / Observações: Servidor NFE
- 23: Origem: Plano Ação Parametrização Coml Souza.xlsx, aba Página1, linha 16. / Utiliza: S / Migrar: N / Instrutor: Eduardo / Participantes: MATHEUS/JEFFERSON / Rotina liberada: OK / Observações: Servidor de licenças
- 24: Origem: Plano Ação Parametrização Coml Souza.xlsx, aba Página1, linha 17. / Utiliza: S / Migrar: N / Instrutor: Eduardo / Participantes: MATHEUS/JEFFERSON / Rotina liberada: OK / Observações: Atualizador de rotinas
- 25: Origem: Plano Ação Parametrização Coml Souza.xlsx, aba Página1, linha 18. / Utiliza: S / Migrar: N / Instrutor: Eduardo / Participantes: MATHEUS/JEFFERSON / Rotina liberada: OK / Observações: Servidor JAVA

| ID | WBS | Task | Type | Duration | Start | Finish | Complete | Remaining |
| --- | --- | --- | --- | --- | --- | --- | --- | --- |
| 26 | 1.1.6.2 | **Suprimentos ( Compras )** |  | 1d | 2025-10-21 A | 2025-10-21 | 84% | 0.16d |
| 27 | 1.1.6.2.1 | Rotina 513 — Cadastrar Departamento ( LINHA COMERCIAL ) | manual | 1d | 2025-10-21 A | 2025-10-21 A | 100% |  |
| 28 | 1.1.6.2.2 | Rotina 571 — Cadastrar Seção | manual | 1d | 2025-10-21 A | 2025-10-21 A | 100% |  |
| 29 | 1.1.6.2.3 | Rotina 564 — Cadastro de Marca | manual | 1d | 2025-10-21 A | 2025-10-21 A | 100% |  |
| 30 | 1.1.6.2.4 | Rotina 256 — Cadastrar Parcelas de Pagto ( compras ) | manual | 1d | 2025-10-21 A | 2025-10-21 A | 100% |  |
| 31 | 1.1.6.2.5 | Rotina 202 — Cadastrar Fornecedores | manual | 1d | 2025-10-21 A | 2025-10-21 A | 100% |  |
| 32 | 1.1.6.2.6 | Rotina 204 — Cadastrar Unidades | manual | 1d | 2025-10-21 A | 2025-10-21 A | 100% |  |
| 33 | 1.1.6.2.7 | Rotina 203 — Cadastrar Produto | manual | 1d | 2025-10-21 A | 2025-10-21 | 70% | 0.3d |
| 34 | 1.1.6.2.8 | Rotina 292 — Cadastrar Embalagem | manual | 1d | 2025-10-21 A | 2025-10-21 | 70% | 0.3d |
| 35 | 1.1.6.2.9 | Rotina 238 — Cadastro de Produto por filial | manual | 1d | 2025-10-21 A | 2025-10-21 A | 100% |  |
| 36 | 1.1.6.2.10 | Rotina 253 — Cadastrar codigo de fabrica do produto | manual | 1d | 2025-10-21 | 2025-10-21 |  |  |
| 37 | 1.1.6.3 | **Tesouraria** |  | 61d | 2025-10-22 A | 2026-01-14 A | 100% |  |
| 38 | 1.1.6.3.1 | Rotina 524 — Cadastrar Caixas/Bancos | manual | 1d | 2025-10-22 A | 2025-10-22 A | 100% |  |
| 39 | 1.1.6.3.2 | Rotina 525 — Cadastrar Ocorrencia de Cobranca Magnetica | manual | 1d | 2026-01-14 A | 2026-01-14 A | 100% |  |
| 40 | 1.1.6.3.3 | Rotina 536 — Cadastrar Historico Padrao | manual | 1d | 2026-01-14 A | 2026-01-14 A | 100% |  |
| 41 | 1.1.6.3.4 | Rotina 1520 — Dados de integracao Bancaria | manual | 1d | 2026-01-14 A | 2026-01-14 A | 100% |  |
| 42 | 1.1.6.3.5 | Rotina 1521 — Layout integração Bancaria | manual | 1d | 2026-01-14 A | 2026-01-14 A | 100% |  |
| 43 | 1.1.6.3.6 | Rotina 527 — Cadastrar Moeda | manual | 1d | 2026-01-14 A | 2026-01-14 A | 100% |  |
| 44 | 1.1.6.3.7 | Rotina 526 — Cadastrar Grupo de Conta Gerencial | manual | 1d | 2026-01-14 A | 2026-01-14 A | 100% |  |
| 45 | 1.1.6.3.8 | Rotina 570 — Cadastrar Conta Gerencial | manual | 1d | 2026-01-14 A | 2026-01-14 A | 100% |  |
| 46 | 1.1.6.3.9 | Rotina 581 — Cadastrar Centro de Custo | manual | 1d | 2026-01-14 A | 2026-01-14 A | 100% |  |
| 47 | 1.1.6.4 | **Comercial** |  | 1d | 2026-03-10 A | 2026-03-10 | 95% | 0.05d |
| 48 | 1.1.6.4.1 | Rotina 516 — Cadastrar Supervisores de Vendas | manual | 1d | 2026-03-10 A | 2026-03-10 A | 100% |  |
| 49 | 1.1.6.4.2 | Rotina 517 — Cadastrar RCA ( vendedores ) | manual | 1d | 2026-03-10 A | 2026-03-10 | 90% | 0.1d |

Notes:
- 26: Módulo consolidado a partir do Plano de Ação de Parametrização. 10 itens registrados.
- 27: Origem: Plano Ação Parametrização Coml Souza.xlsx, aba Página1, linha 21. / Utiliza: S / Migrar: S / Instrutor: Eduardo / Participantes: PEDRO/THAMARA/GABRIEL/ MATHEUS / Rotina liberada: OK / Observações: -
- 28: Origem: Plano Ação Parametrização Coml Souza.xlsx, aba Página1, linha 22. / Utiliza: S / Migrar: N / Instrutor: Eduardo / Participantes: PEDRO/THAMARA/GABRIEL/ MATHEUS / Rotina liberada: OK / Observações: -
- 29: Origem: Plano Ação Parametrização Coml Souza.xlsx, aba Página1, linha 25. / Utiliza: S / Migrar: N / Instrutor: Eduardo / Participantes: PEDRO/THAMARA/GABRIEL/ MATHEUS / Rotina liberada: OK / Observações: -
- 30: Origem: Plano Ação Parametrização Coml Souza.xlsx, aba Página1, linha 27. / Utiliza: S / Migrar: N / Instrutor: Eduardo / Participantes: PEDRO/THAMARA/GABRIEL/ MATHEUS / Rotina liberada: OK / Observações: -
- 31: Origem: Plano Ação Parametrização Coml Souza.xlsx, aba Página1, linha 28. / Utiliza: S / Migrar: S / Instrutor: Eduardo / Participantes: PEDRO/THAMARA/GABRIEL/ MATHEUS / Rotina liberada: OK / Observações: -
- 32: Origem: Plano Ação Parametrização Coml Souza.xlsx, aba Página1, linha 29. / Utiliza: S / Migrar: N / Instrutor: Eduardo / Participantes: PEDRO/THAMARA/GABRIEL/ MATHEUS / Rotina liberada: OK / Observações: -
- 33: Origem: Plano Ação Parametrização Coml Souza.xlsx, aba Página1, linha 30. / Utiliza: S / Migrar: S / Instrutor: Eduardo / Participantes: PEDRO/THAMARA/GABRIEL/ MATHEUS / Rotina liberada: OK / Observações: -
- 34: Origem: Plano Ação Parametrização Coml Souza.xlsx, aba Página1, linha 31. / Utiliza: S / Migrar: S / Instrutor: Eduardo / Participantes: PEDRO/THAMARA/GABRIEL/ MATHEUS / Rotina liberada: OK / Observações: -
- 35: Origem: Plano Ação Parametrização Coml Souza.xlsx, aba Página1, linha 32. / Utiliza: S / Migrar: N / Instrutor: Eduardo / Participantes: PEDRO/THAMARA/GABRIEL/ MATHEUS / Rotina liberada: OK / Observações: -
- 36: Origem: Plano Ação Parametrização Coml Souza.xlsx, aba Página1, linha 34. / Utiliza: S / Migrar: S / Instrutor: Eduardo / Participantes: PEDRO/THAMARA/GABRIEL/ MATHEUS / Rotina liberada: OK / Observações: -
- 37: Módulo consolidado a partir do Plano de Ação de Parametrização. 9 itens registrados.
- 38: Origem: Plano Ação Parametrização Coml Souza.xlsx, aba Página1, linha 37. / Utiliza: S / Migrar: N / Instrutor: Eduardo / Participantes: LEILA/ SEIJI / Rotina liberada: OK / Observações: -
- 39: Origem: Plano Ação Parametrização Coml Souza.xlsx, aba Página1, linha 38. / Utiliza: S / Migrar: N / Instrutor: Eduardo / Participantes: SEIJI / Rotina liberada: OK / Observações: -
- 40: Origem: Plano Ação Parametrização Coml Souza.xlsx, aba Página1, linha 39. / Utiliza: S / Migrar: N / Instrutor: Eduardo / Participantes: SEIJI / Rotina liberada: OK / Observações: -
- 41: Origem: Plano Ação Parametrização Coml Souza.xlsx, aba Página1, linha 40. / Utiliza: S / Migrar: N / Instrutor: Eduardo / Participantes: EDUARDO TOTVS / Rotina liberada: OK / Observações: -
- 42: Origem: Plano Ação Parametrização Coml Souza.xlsx, aba Página1, linha 41. / Utiliza: S / Migrar: N / Instrutor: Eduardo / Participantes: EDUARDO TOTVS / Rotina liberada: OK / Observações: -
- 43: Origem: Plano Ação Parametrização Coml Souza.xlsx, aba Página1, linha 42. / Utiliza: S / Migrar: N / Instrutor: Eduardo / Participantes: SEIJI / Rotina liberada: OK / Observações: -
- 44: Origem: Plano Ação Parametrização Coml Souza.xlsx, aba Página1, linha 43. / Utiliza: S / Migrar: N / Instrutor: Eduardo / Participantes: SEIJI / Rotina liberada: OK / Observações: -
- 45: Origem: Plano Ação Parametrização Coml Souza.xlsx, aba Página1, linha 44. / Utiliza: S / Migrar: N / Instrutor: Eduardo / Participantes: SEIJI / Rotina liberada: OK / Observações: -
- 46: Origem: Plano Ação Parametrização Coml Souza.xlsx, aba Página1, linha 45. / Utiliza: S / Migrar: N / Instrutor: Eduardo / Participantes: SEIJI / Rotina liberada: OK / Observações: -
- 47: Módulo consolidado a partir do Plano de Ação de Parametrização. 2 itens registrados.
- 48: Origem: Plano Ação Parametrização Coml Souza.xlsx, aba Página1, linha 47. / Utiliza: S / Migrar: N / Instrutor: Eduardo / Participantes: TELMA / MICHELLE / Rotina liberada: OK / Observações: -
- 49: Origem: Plano Ação Parametrização Coml Souza.xlsx, aba Página1, linha 48. / Utiliza: S / Migrar: S / Instrutor: Eduardo / Participantes: TELMA / MICHELLE / Rotina liberada: OK / Observações: -

| ID | WBS | Task | Type | Duration | Start | Finish | Complete | Remaining | Constraint | Resources | Work | Actual work | Cost | Actual cost | %Conclusão | Horas Realizadas | Inicio | Intervalo | Fim |
| --- | --- | --- | --- | --- | --- | --- | --- | --- | --- | --- | --- | --- | --- | --- | --- | --- | --- | --- | --- |
| 50 | 1.1.6.5 | **Cobrança / Analise de Crédito** |  | 39d | 2026-01-15 A | 2026-03-10 A | 100% |  |  |  |  |  |  |  |  |  |  |  |  |
| 51 | 1.1.6.5.1 | Rotina 345 — Cadastrar Rede de Cliente ( GRUPO DE CLIENTE ) | manual | 1d | 2026-01-15 A | 2026-01-15 A | 100% |  |  |  |  |  |  |  |  |  |  |  |  |
| 52 | 1.1.6.5.2 | Rotina 512 — Cadastrar Ramos de Atividade de Clientes | manual | 1d | 2026-01-15 A | 2026-01-15 A | 100% |  |  |  |  |  |  |  |  |  |  |  |  |
| 53 | 1.1.6.5.3 | Rotina 508/4005 — Cadastro de CNAE | manual | 1d | 2026-01-15 A | 2026-01-15 A | 100% |  |  |  |  |  |  |  |  |  |  |  |  |
| 54 | 1.1.6.5.4 | Rotina 577 — Cadastro de cidade IBGE | manual | 1d | 2026-03-10 A | 2026-03-10 A | 100% |  |  |  |  |  |  |  |  |  |  |  |  |
| 55 | 1.1.6.5.5 | Rotina 302 — Cadastrar Clientes | manual | 1d | 2026-01-15 A | 2026-01-15 A | 100% |  |  |  |  |  |  |  |  |  |  |  |  |
| 56 | 1.1.6.5.6 | Rotina 3312 — Cadastro de contatos/socios | manual | 1d | 2026-01-15 A | 2026-01-15 A | 100% |  |  |  |  |  |  |  |  |  |  |  |  |
| 57 | 1.1.6.5.7 | Rotina 3313 — Cadastro de Referencia Comercial | manual | 1d | 2026-01-15 A | 2026-01-15 A | 100% |  |  |  |  |  |  |  |  |  |  |  |  |
| 58 | 1.1.6.5.8 | Rotina 1203 — Extrato de Cliente ( limite de credito ) | manual | 1d | 2026-01-15 A | 2026-01-15 A | 100% |  |  |  |  |  |  |  |  |  |  |  |  |
| 59 | 1.1.6.5.9 | Rotina 3314 — Vincular tabela de preco por cliente | manual | 1d | 2026-01-15 A | 2026-01-15 A | 100% |  |  |  |  |  |  |  |  |  |  |  |  |
| 60 | 1.1.6.6 | **Logistica** |  | 1d | 2025-10-22 A | 2025-10-22 A | 100% |  |  |  |  |  |  |  |  |  |  |  |  |
| 61 | 1.1.6.6.1 | Rotina 520 — Cadastrar Rotas de Entrega | manual | 1d | 2025-10-22 A | 2025-10-22 A | 100% |  |  |  |  |  |  |  |  |  |  |  |  |
| 62 | 1.1.6.6.2 | Rotina 572 — Cadastrar Pracas de Entrega | manual | 1d | 2025-10-22 A | 2025-10-22 A | 100% |  |  |  |  |  |  |  |  |  |  |  |  |
| 63 | 1.1.6.6.3 | Rotina 521 — Cadastrar Veiculos | manual | 1d | 2025-10-22 A | 2025-10-22 A | 100% |  |  |  |  |  |  |  |  |  |  |  |  |
| 64 | 1.1.6.6.4 | Rotina 929 — Cadastrar Motorista | manual | 1d | 2025-10-22 A | 2025-10-22 A | 100% |  |  |  |  |  |  |  |  |  |  |  |  |
| 65 | 1.1.6.6.5 | Rotina 518 — Cadastrar Motivo de Devolucao | manual | 1d | 2025-10-22 A | 2025-10-22 A | 100% |  |  |  |  |  |  |  |  |  |  |  |  |
| 66 | 1.1.6.7 | **Fiscal** |  | 2d | 2026-01-21 A | 2026-01-22 | 64% | 0.72d |  |  |  |  |  |  |  |  |  |  |  |
| 67 | 1.1.6.7.1 | Rotina 543 — Cadastrar Codigo Fiscal (CFOP) | manual | 1d | 2026-01-21 A | 2026-01-21 A | 100% |  |  |  |  |  |  |  |  |  |  |  |  |
| 68 | 1.1.6.7.2 | Rotina 580 — Cadastrar NCM | manual | 1d | 2026-01-22 A | 2026-01-22 A | 100% |  |  |  |  |  |  |  |  |  |  |  |  |
| 69 | 1.1.6.7.3 | Rotina 4004 — Cadastrar CEST / Rotina 4008 Beneficios Fiscais | manual | 1d | 2026-01-21 A | 2026-01-21 | 50% | 0.5d |  |  |  |  |  |  |  |  |  |  |  |
| 70 | 1.1.6.7.4 | Rotina 4001 — Cadastrar Cenarios Tributacao de PIS/COFINS - ( saida ) | manual | 1d | 2026-01-21 A | 2026-01-21 A | 100% |  |  |  |  |  |  |  |  |  |  |  |  |
| 71 | 1.1.6.7.5 | Rotina 514 — Cadastrar Tipo de Tributacao de Saida (Figuras Tributarias) | manual | 1d | 2026-01-21 A | 2026-01-21 | 60% | 0.4d |  |  |  |  |  |  |  |  |  |  |  |
| 72 | 1.1.6.7.6 | Rotina 574 — Tributacao por Estado | manual | 1d | 2026-01-21 A | 2026-01-21 | 80% | 0.2d |  |  |  |  |  |  |  |  |  |  |  |
| 73 | 1.1.6.7.7 | Rotina 212 — Cadastrar Tributacao Entrada Mercadoria | manual | 1d | 2026-01-21 A | 2026-01-21 | 20% | 0.8d |  |  |  |  |  |  |  |  |  |  |  |
| 74 | 1.1.6.7.8 | Rotina 238 — Manutenção de produtos por filial (Origem da mercadoria) | manual | 1d | 2026-01-21 | 2026-01-21 |  |  |  |  |  |  |  |  |  |  |  |  |  |
| 75 | 1.1.7 | Enviar arquivo para migração | manual | 1d | 2025-12-19 A | 2025-12-19 A | 100% |  | start no earlier than 2025-12-19 | Comercial Souza | 8h | 8h | 1,270 | 1,270 | 100 |  |  |  |  |
| 76 | 1.1.8 | Validar arquivo de Migração | manual | 5d | 2025-12-22 A | 2025-12-26 A | 100% |  | start no earlier than 2025-12-22 | Eduardo Ramos | 40h | 40h | 6,070 | 6,070 | 100 |  |  |  |  |
| 77 | 1.1.9 | Realizar Migração dos dados | manual | 37d | 2026-01-01 A | 2026-02-20 A | 100% |  | start no earlier than 2026-01-01 | Eduardo Ramos | 296h | 296h | 44,470 | 44,470 | 100 | 60 | 09:00 | 12:30/13:00 | 17:30 |
| 78 | 1.1.10 | Termo Encerramento Abertura e Cronograma Projeto | manual | 1d | 2026-03-23 A | 2026-03-23 A | 100% |  |  | Eduardo Ramos | 8h | 8h | 1,270 | 1,270 | 100 |  |  |  |  |
| 79 | 1.1.11 | Visita Extra - Reunião de Projeto e alinhamento cronograma | manual | 1d | 2026-03-23 A | 2026-03-23 A | 100% |  |  | Eduardo Ramos; Romulo Silva | 16h | 16h | 2,540 | 2,540 | 100 | 4 | 09:00 | ---------- | 12:30 |

Notes:
- 50: Módulo consolidado a partir do Plano de Ação de Parametrização. 9 itens registrados.
- 51: Origem: Plano Ação Parametrização Coml Souza.xlsx, aba Página1, linha 50. / Utiliza: S / Migrar: S / Instrutor: Eduardo / Participantes: SEIJI / ISABELA / DAYANE / Rotina liberada: OK / Observações: -
- 52: Origem: Plano Ação Parametrização Coml Souza.xlsx, aba Página1, linha 51. / Utiliza: S / Migrar: S / Instrutor: Eduardo / Participantes: SEIJI / ISABELA / DAYANE / Rotina liberada: OK / Observações: MIGRACAO JA REALIZADA
- 53: Origem: Plano Ação Parametrização Coml Souza.xlsx, aba Página1, linha 52. / Utiliza: S / Migrar: S / Instrutor: Eduardo / Participantes: SEIJI / ISABELA / DAYANE / Rotina liberada: OK / Observações: -
- 54: Origem: Plano Ação Parametrização Coml Souza.xlsx, aba Página1, linha 53. / Utiliza: S / Migrar: N / Instrutor: Eduardo / Participantes: DAYANE / Rotina liberada: - / Observações: -
- 55: Origem: Plano Ação Parametrização Coml Souza.xlsx, aba Página1, linha 54. / Utiliza: S / Migrar: S / Instrutor: Eduardo / Participantes: SEIJI / ISABELA / DAYANE / Rotina liberada: OK / Observações: -
- 56: Origem: Plano Ação Parametrização Coml Souza.xlsx, aba Página1, linha 55. / Utiliza: S / Migrar: N / Instrutor: Eduardo / Participantes: SEIJI / ISABELA / DAYANE / Rotina liberada: OK / Observações: -
- 57: Origem: Plano Ação Parametrização Coml Souza.xlsx, aba Página1, linha 56. / Utiliza: S / Migrar: N / Instrutor: Eduardo / Participantes: SEIJI / ISABELA / DAYANE / Rotina liberada: OK / Observações: -
- 58: Origem: Plano Ação Parametrização Coml Souza.xlsx, aba Página1, linha 58. / Utiliza: S / Migrar: N / Instrutor: Eduardo / Participantes: SEIJI / ISABELA / DAYANE / Rotina liberada: OK / Observações: -
- 59: Origem: Plano Ação Parametrização Coml Souza.xlsx, aba Página1, linha 59. / Utiliza: S / Migrar: S / Instrutor: Eduardo / Participantes: SEIJI / ISABELA / Rotina liberada: OK / Observações: -
- 60: Módulo consolidado a partir do Plano de Ação de Parametrização. 5 itens registrados.
- 61: Origem: Plano Ação Parametrização Coml Souza.xlsx, aba Página1, linha 66. / Utiliza: S / Migrar: S / Instrutor: Eduardo / Participantes: THAMIRES / WESLEY / GIOVANI / Rotina liberada: OK / Observações: -
- 62: Origem: Plano Ação Parametrização Coml Souza.xlsx, aba Página1, linha 67. / Utiliza: S / Migrar: S / Instrutor: Eduardo / Participantes: THAMIRES / WESLEY / GIOVANI / Rotina liberada: OK / Observações: -
- 63: Origem: Plano Ação Parametrização Coml Souza.xlsx, aba Página1, linha 68. / Utiliza: N / Migrar: N / Instrutor: Eduardo / Participantes: THAMIRES / WESLEY / GIOVANI / Rotina liberada: OK / Observações: -
- 64: Origem: Plano Ação Parametrização Coml Souza.xlsx, aba Página1, linha 69. / Utiliza: S / Migrar: S / Instrutor: Eduardo / Participantes: THAMIRES / WESLEY / GIOVANI / Rotina liberada: OK / Observações: -
- 65: Origem: Plano Ação Parametrização Coml Souza.xlsx, aba Página1, linha 70. / Utiliza: S / Migrar: N / Instrutor: Eduardo / Participantes: THAMIRES / WESLEY / GIOVANI / Rotina liberada: OK / Observações: -
- 66: Módulo consolidado a partir do Plano de Ação de Parametrização. 8 itens registrados.
- 67: Origem: Plano Ação Parametrização Coml Souza.xlsx, aba Página1, linha 72. / Utiliza: S / Migrar: N / Instrutor: Eduardo / Participantes: JONES / CARLOS / CLEITON / DANI / Rotina liberada: OK / Observações: -
- 68: Origem: Plano Ação Parametrização Coml Souza.xlsx, aba Página1, linha 73. / Utiliza: S / Migrar: N / Instrutor: Eduardo / Participantes: JONES / CARLOS / CLEITON / DANI / Rotina liberada: OK / Observações: -
- 69: Origem: Plano Ação Parametrização Coml Souza.xlsx, aba Página1, linha 74. / Utiliza: S / Migrar: N / Instrutor: Eduardo / Participantes: JONES / CARLOS / CLEITON / DANI / Rotina liberada: OK / Observações: -
- 70: Origem: Plano Ação Parametrização Coml Souza.xlsx, aba Página1, linha 75. / Utiliza: S / Migrar: N / Instrutor: Eduardo / Participantes: JONES / CARLOS / CLEITON / DANI / Rotina liberada: OK / Observações: -
- 71: Origem: Plano Ação Parametrização Coml Souza.xlsx, aba Página1, linha 76. / Utiliza: S / Migrar: N / Instrutor: Eduardo / Participantes: JONES / CARLOS / CLEITON / DANI / Rotina liberada: OK / Observações: -
- 72: Origem: Plano Ação Parametrização Coml Souza.xlsx, aba Página1, linha 77. / Utiliza: S / Migrar: N / Instrutor: Eduardo / Participantes: JONES / CARLOS / CLEITON / DANI / Rotina liberada: OK / Observações: -
- 73: Origem: Plano Ação Parametrização Coml Souza.xlsx, aba Página1, linha 78. / Utiliza: S / Migrar: N / Instrutor: Eduardo / Participantes: JONES / CARLOS / CLEITON / DANI / Rotina liberada: OK / Observações: -
- 74: Origem: Plano Ação Parametrização Coml Souza.xlsx, aba Página1, linha 80. / Utiliza: S / Migrar: N / Instrutor: Eduardo / Participantes: JONES / CARLOS / CLEITON / DANI / Rotina liberada: OK / Observações: -

| ID | WBS | Task | Type | Duration | Start | Finish | Predecessors | Complete | Remaining | Actual finish | Total slack | Constraint | Resources | Work | Actual work | Cost | Actual cost | %Conclusão |
| --- | --- | --- | --- | --- | --- | --- | --- | --- | --- | --- | --- | --- | --- | --- | --- | --- | --- | --- |
| 80 | 1.2 | **2. Abertura e Preparação do WMS/RF** |  | 38d? | 2026-03-10 A | 2026-03-11 |  | 100% |  | 2026-04-30 |  |  |  | 368h | 368h | 55,550 | 55,550 | 100 |
| 81 | 1.2.1 | Levantamento de Processos e Aderências |  | 2d | 2026-03-10 A | 2026-03-11 A |  | 100% |  |  |  | start no earlier than 2026-03-10 | Romulo Silva | 16h | 16h | 2,470 | 2,470 | 100 |
| 82 | 1.2.2 | Configurar Etiquetas ( pallet, separação, recebimento, etc .. ) | manual | 2d | 2026-03-10 A | 2026-03-11 A |  | 100% |  |  |  |  | Romulo Silva | 16h | 16h | 2,470 | 2,470 | 100 |
| 83 | 1.2.3 | Configurar Coletor RF | manual | 2d | 2026-03-10 A | 2026-03-11 A |  | 100% |  |  |  |  | Romulo Silva | 16h | 16h | 2,470 | 2,470 | 100 |
| 84 | 1.2.4 | Treinamento Parametrização Cadastros WMS e RF |  | 2d | 2026-04-06 A | 2026-04-07 A |  | 100% |  |  |  | start no earlier than 2026-04-06 | Romulo Silva | 16h | 16h | 2,470 | 2,470 | 100 |
| 85 | 1.2.5 | Preencher e entregar planilha de migração dados logisticos | manual | 38d | 2026-03-10 A | 2026-04-30 A |  | 100% |  |  |  |  | Romulo Silva | 304h | 304h | 45,670 | 45,670 |  |
| 86 | 1.3 | **3. Treinamento ERP Ciclo I e WMS** |  | 56d | 2026-07-01 A | 2026-09-16 |  | 27% | 40.82d |  | 114d |  |  | 144h | 144h | 22,790 | 22,790 |  |
| 87 | 1.3 | **3.1. Treinamento ERP Ciclo I** |  | 22d | 2026-07-01 A | 2026-07-30 A |  | 100% |  |  |  |  |  | 104h | 104h | 16,510 | 16,510 | 100 |
| 88 | 1.3.1 | Treinamento Compras |  | 1d | 2026-07-01 A | 2026-07-01 A |  | 100% |  |  |  | start no earlier than 2026-07-01 | Eduardo Ramos | 8h | 8h | 1,270 | 1,270 | 100 |
| 89 | 1.3.2 | Treinamento Entrada Mercadoria |  | 1d | 2026-07-02 A | 2026-07-02 A | 88 | 100% |  |  |  |  | Eduardo Ramos | 8h | 8h | 1,270 | 1,270 | 100 |
| 90 | 1.3.3 | Treinamento Precificação | manual | 1d | 2026-07-06 A | 2026-07-06 A |  | 100% |  |  |  |  |  |  |  |  |  | 100 |
| 91 | 1.3.4 | Treinamento Estoque |  | 1d | 2026-07-07 A | 2026-07-07 A |  | 100% |  |  |  | start no earlier than 2026-07-07 | Eduardo Ramos | 8h | 8h | 1,270 | 1,270 | 100 |
| 92 | 1.3.5 | Treinamento Vendas / Call Center |  | 1d | 2026-07-08 A | 2026-07-08 A | 91 | 100% |  |  |  |  | Eduardo Ramos | 8h | 8h | 1,270 | 1,270 | 100 |
| 93 | 1.3.6 | Treinamento Transporte |  | 1d | 2026-07-14 A | 2026-07-14 A |  | 100% |  |  |  | start no earlier than 2026-07-14 | Eduardo Ramos | 8h | 8h | 1,270 | 1,270 | 100 |
| 94 | 1.3.7 | Treinamento Faturamento |  | 1d | 2026-07-15 A | 2026-07-15 A |  | 100% |  |  |  | start no earlier than 2026-07-15 | Eduardo Ramos | 8h | 8h | 1,270 | 1,270 | 100 |
| 95 | 1.3.8 | Treinamento Financeiro 2 |  | 1d | 2026-07-16 A | 2026-07-16 A |  | 100% |  |  |  | start no earlier than 2026-07-16 | Eduardo Ramos | 8h | 8h | 1,270 | 1,270 | 100 |
| 96 | 1.3.9 | Treinamento Contas a Pagar |  | 1d | 2026-07-17 A | 2026-07-17 A |  | 100% |  |  |  | start no earlier than 2026-07-17 | Eduardo Ramos | 8h | 8h | 1,270 | 1,270 | 100 |
| 97 | 1.3.10 | Treinamento Financeiro 3 |  | 1d | 2026-07-20 A | 2026-07-20 A | 96, 95, 94, 93 | 100% |  |  |  |  | Eduardo Ramos | 8h | 8h | 1,270 | 1,270 | 100 |
| 98 | 1.3.11 | Treinamento Fiscal e Revisão de Parametrização Fiscal |  | 1d | 2026-07-21 A | 2026-07-21 A | 97 | 100% |  |  |  |  | Eduardo Ramos | 8h | 8h | 1,270 | 1,270 | 100 |
| 99 | 1.3.12 | Treinamento Financeiro 1 |  | 1d | 2026-07-22 A | 2026-07-22 A | 98 | 100% |  |  |  |  | Eduardo Ramos | 8h | 8h | 1,270 | 1,270 | 100 |
| 100 | 1.3.13 | Treinamento Restante Cobrança / Credito / Duvidas Faturamento |  | 1d | 2026-07-28 A | 2026-07-28 A |  | 100% |  |  |  | start no earlier than 2026-07-28 | Eduardo Ramos | 8h | 8h | 1,270 | 1,270 |  |
| 101 | 1.3.14 | Treinamento Anderson - Precificação |  | 1d | 2026-07-30 A | 2026-07-30 A |  | 100% |  |  |  | start no earlier than 2026-07-30 | Eduardo Ramos | 8h | 8h | 1,270 | 1,270 |  |
| 102 | 1.4 | **3.2. Treinamento WMS/RF** |  | 5d | 2026-07-20 A | 2026-07-24 A | 84 | 100% |  |  |  |  |  | 40h | 40h | 6,280 | 6,280 | 100 |
| 103 | 1.4.1 | Treinamento Entrada Mercadoria |  | 1d | 2026-07-20 A | 2026-07-20 A |  | 100% |  |  |  | start no earlier than 2026-07-20 | Romulo Silva | 8h | 8h | 1,270 | 1,270 |  |
| 104 | 1.4.2 | Movimentação Interna |  | 1d | 2026-07-21 A | 2026-07-21 A | 103 | 100% |  |  |  |  | Romulo Silva | 8h | 8h | 1,270 | 1,270 |  |
| 105 | 1.4.3 | Expedição |  | 1d | 2026-07-22 A | 2026-07-22 A | 104 | 100% |  |  |  |  | Romulo Silva | 8h | 8h | 1,270 | 1,270 |  |
| 106 | 1.4.4 | Configuração de Inventários / Relatorios Diversos |  | 2d | 2026-07-23 A | 2026-07-24 A | 105 | 100% |  |  |  | start no earlier than 2020-01-09 | Romulo Silva | 16h | 16h | 2,470 | 2,470 |  |

Notes:
- 84: Parametrização / Rotina 132 - Parametro da Presidencia (Filial utiliza WMS) / Rotina 1795 - Parâmetros WMS / Rotina 1775 - Cadastro de Perfis WMS / Rotina 528 - Cadastro de Usuários (WMS, atribuir perfis) / Rotina 530 - Cadastro de Grupos e Acessos aos Usuários / Rotina 1720 - Cadastro de Caracteristicas / Rotina 1718 - Cadastro de Tipos de Endereços / Rotina 1702 - Cadastro de Endereços / Rotina 1751 - Configuração de Modelos de Operação / Rotina 1701 - Cadastro de Dados Logisticos / Rotina 1707 - Consultas Auxiliares / Rotina 3706 - Atribuir Picking ao Produto / Rotina 3707 - Transferir Picking / Rotina 3708 - Trocar Picking / Rotina 3715 - Cadastro de Dados Logisticos / Rotina 3701 - Consultar Endereço / Produto
- 103: Operacional / Processo Entrada / Rotina 1757 - Gerar WMS / Rotina 1710 - Gerar Conferência de Entrada / Rotina 1711 - Digitação de Conferência (desktop) / Rotina 3712 - Conferência de Entrada (RF) / Rotina 1704 - Armazenagem Conferência Fechada / Rotina 1771 - Armazenagem Conferência Aberta / Rotina 1756 - Mapa/Etiqueta de Armazenagem / Rotina 1763 - Gerar Ordem Armazenagem Devolução de Cliente / Rotina 1740 - Registrar Inicio de O.S. (Manual) / Rotina 1708 - Armazenagem Manual / Rotina 3713 - Armazenagem (U.M.A) / Rotina 3719 - Armazenagem por O.S. / Rotina 1705 - Estorno de Endereçamento / Rotina 1755 - Finalizar O.S.
- 104: Movimentação Interna / Rotina 1723 - Abastecimento Preventivo / Rotina 3714 - Abastecimento Preventivo (RF) / Rotina 1709 - Transferência de Endereço / Rotina 3709 - Transferência de Endereço (RF) / Rotina 1721 - Transferir Estoque Avaria / Rotina 1730 - Parametrização de Invetário / Rotina 1731 - Montagem de Invetário / Rotina 1732 - Digitação de Inventário / Rotina 3717 - Digitação de Inventário (RF) / Rotina 1733 - Gestão de Inventário (Acompanhamento) / Rotina 1737 - Atualização de Inventário WMS-ERP / Rotina 1752 - Gerar Mapa Separação (Baixa de Estoque/Avaria) / Rotina 3714 - Executar Ordem de Serviço (Baixa de Estoque/Avaria
- 105: Expedição / Rotina 1719 - Cadastro de Caixas (controle) / Rotina 1757 - Gerar WMS / Rotina 1751 - Modelos de Operação / Rotina 1752 - Gerar Mapa de Separação/Abastecimento / Rotina 1756 - Impressão Mapa/Etiqueta Expedição / Rotina 1781 - Gestão RF / Rotina 1740 - Registrar Inicio de O.S. (Manual) / Rotina 3734 - Separação (RF) / Rotina 1759 - Conferência / Rotina 3735 - Conferência (RF) / Rotina 1743 - Registrar Cortes / Rotina 1755 - Finalizar O.S.[ / Rotina 1726 - Estorno/Cancelamento O.S. / Rotina 3720 - Conferência de Embarque
- 106: Rotinas Auxiliares / Rotina 1707 - Consultas Auxiliaires / Rotina 1728 - Monitor de O.S. / Rotina 1727 - Acompanhamento de Produtividade / Rotina 1773 - Produtos com Problemas de Dados Logisticos / Rotina 1754 - Monitor de Finalização O.S. / Rotina 1767 - Relatório de Cortes Logisticos

| ID | WBS | Task | Type | Duration | Start | Finish | Predecessors | Complete | Remaining | Total slack | Free slack | Constraint | Resources | Work | Cost |
| --- | --- | --- | --- | --- | --- | --- | --- | --- | --- | --- | --- | --- | --- | --- | --- |
| 107 | 1.3.3 | **3.3. Replicação Interna Ciclo I e WMS** |  | 55d | 2026-07-02 A | 2026-08-07 |  | 7% | 25.03d |  |  |  |  |  |  |
| 108 | 1.5 | Replicação Interna ERP Ciclo I |  | 32d | 2026-07-02 A | 2026-08-14 | 88 | 16% | 26.88d | 12d | 0d | start no earlier than 2026-07-01 |  |  |  |
| 109 | 1.6 | Replicação WMS |  | 35d | 2026-07-27 | 2026-09-11 | 106 |  |  | 117d |  |  |  |  |  |
| 110 | 1.7 | Simulado WMS | manual | 3d | 2026-09-14 | 2026-09-16 |  |  |  |  |  |  |  |  |  |
| 111 | 1.8 | **4. Iniciar Plano de Testes Aplicativos Terceiros** |  | 4d | 2026-08-03 | 2026-08-07 |  |  |  |  |  |  |  |  |  |
| 112 | 1.4.1 | ISTHMUS | manual | 1d | 2026-08-03 | 2026-08-03 |  |  |  |  |  |  |  |  |  |
| 113 | 1.4.2 | N3URONS | manual | 1d | 2026-08-04 | 2026-08-04 | 112 |  |  |  |  |  |  |  |  |
| 114 | 1.4.3 | Rotinas Customizadas | manual | 1d | 2026-08-05 | 2026-08-05 | 113 |  |  |  |  |  |  |  |  |
| 115 | 1.4.4 | POWER BI | manual | 1d | 2026-08-06 | 2026-08-06 | 114 |  |  |  |  |  |  |  |  |
| 116 | 1.9 | **5. Avaliação Replicação ERP Ciclo I** |  | 15d | 2026-08-17 | 2026-08-21 | 108 |  |  |  |  |  |  | 120h | 18,350 |
| 117 | 1.9.1 | Avaliar Setores ( Replicação ) |  | 4d | 2026-08-17 | 2026-08-20 |  |  |  | 12d | 0d | start no earlier than 2026-08-17 | Romulo Silva; Eduardo Ramos | 64h | 9,740 |
| 118 | 1.9.2 | Termo Avaliação Ciclo I |  | 1d | 2026-08-21 | 2026-08-21 | 117 |  |  | 12d | 5d |  | Romulo Silva; Eduardo Ramos | 16h | 2,540 |
| 119 | 1.9.4 | Migração TESTE 1 Dados de movimentação ( receber, pagar, preço e custo ) |  | 5d | 2026-08-31 | 2026-09-04 | 118 |  |  | 7d | 0d | start no earlier than 2026-08-31 | Eduardo Ramos | 40h | 6,070 |
| 120 | 1.10 | **6. Treinamento ERP — Ciclo II** |  | 38d? | 2026-09-07 | 2026-09-16 | 119 |  |  |  |  |  |  | 208h | 32,460 |
| 121 | 1.10.1 | Treinamento Compras / Tabela por Fornecedor |  | 1d | 2026-09-07 | 2026-09-07 | 119 |  |  | 116d | 0d | start no earlier than 2026-08-31 | Romulo Silva; Eduardo Ramos | 16h | 2,540 |
| 122 | 1.10.2 | Treinamento Entrada de Mercadoria |  | 1d | 2026-09-08 | 2026-09-08 | 121 |  |  | 116d | 0d |  | Romulo Silva; Eduardo Ramos | 16h | 2,540 |
| 123 | 1.10.3 | Treinamento Processo de VERBA |  | 1d | 2026-09-09 | 2026-09-09 | 122 |  |  | 116d | 0d |  | Romulo Silva; Eduardo Ramos | 16h | 2,540 |
| 124 | 1.10.4 | Treinamento Vendas / Metas e Campanhas / Politicas de Desconto |  | 1d | 2026-09-10 | 2026-09-10 | 123 |  |  | 116d | 0d |  | Romulo Silva; Eduardo Ramos | 16h | 2,540 |
| 125 | 1.10.5 | Treinamento Financeiro / Comissão e Baixa de Verbas |  | 1d | 2026-09-11 | 2026-09-11 | 124 |  |  | 116d | 0d |  | Romulo Silva; Eduardo Ramos | 16h | 2,540 |
| 126 | 1.10.6 | Treinamento Livros Fiscais / Manutenção / Geração |  | 1d | 2026-09-14 | 2026-09-14 | 125 |  |  | 116d |  |  | Romulo Silva; Eduardo Ramos | 16h | 2,540 |
| 127 | 1.10.7 | Treinamento Rotinas Customizadas / Estoque unificado |  | 1d | 2026-09-15 | 2026-09-15 |  |  |  | 115d |  | start no earlier than 2026-09-15 | Romulo Silva; Eduardo Ramos | 16h | 2,540 |
| 128 | 1.10.8 | Treinamento Relatórios Gerenciais | manual | 1d | 2026-09-16 | 2026-09-16 |  |  |  |  |  |  | Romulo Silva; Eduardo Ramos | 16h | 2,540 |
| 129 | 1.10.9 | Migração TESTE 2 Dados de movimentação ( receber, pagar, preço e custo ) | manual | 5d | 2026-09-21 | 2026-09-25 |  |  |  |  |  |  | Romulo Silva; Eduardo Ramos | 80h | 12,140 |
| 130 | 1.11 | **6.1. Replicação Interna Ciclo II** |  | 30d? | 2026-09-17 | 2026-10-28 | 128 |  |  |  |  |  |  |  |  |
| 131 | 1.6.10.1 | Replicação Interna ERP Ciclo II | manual | 30d | 2026-09-17 | 2026-10-28 | 128 |  |  |  |  |  |  |  |  |

Notes:
- 117: Tarefas com um um pino próximo a eles são tarefas agendadas manualmente. Use-as quando você não quer que o Project mova uma tarefa. Voce também pode digitar texto livre nos campos de duração, início e encerramento ou deixar em branco se ainda não tem toda a informação.

| ID | WBS | Task | Type | Duration | Start | Finish | Predecessors | Total slack | Free slack | Constraint | Resources | Work | Cost |
| --- | --- | --- | --- | --- | --- | --- | --- | --- | --- | --- | --- | --- | --- |
| 132 | 1.12 | **7. Avaliação Replicação ERP Ciclo II e WMS** |  | 12d | 2026-10-12 | 2026-10-19 | 130 |  |  |  |  | 120h | 18,350 |
| 133 | 1.12.1 | Avaliar Setores ( Replicação ) |  | 4d | 2026-10-12 | 2026-10-15 |  | 92d | 0d | start no earlier than 2026-10-12 | Romulo Silva; Eduardo Ramos | 64h | 9,740 |
| 134 | 1.12.2 | Termo Avaliação Ciclo II e WMS |  | 1d | 2026-10-16 | 2026-10-16 | 133 | 92d |  | start no earlier than 2020-05-15 | Romulo Silva; Eduardo Ramos | 16h | 2,540 |
| 135 | 1.12.3 | Termo Validação Aplicativos Terceiros |  | 5d | 2026-10-19 | 2026-10-23 |  | 79d | 0d | start no earlier than 2026-10-19 | Eduardo Ramos | 40h | 6,070 |
| 136 | 1.13 | Simulados ( ERP e WMS ) | manual | 8d | 2026-10-16 | 2026-10-27 | 135 |  |  |  |  |  |  |
| 137 | 1.14 | **8. Cutover e Entrada em Produção** |  | 70d | 2026-10-28 | 2026-11-03 |  |  |  |  |  | 80h | 12,420 |
| 138 | 1.14.1 | Preparação para Virada |  | 2d | 2026-10-28 | 2026-10-29 |  | 83d |  |  | Romulo Silva; Eduardo Ramos | 32h | 4,940 |
| 139 | 1.14.2 | Migração FINAL ! Dados de movimentação ( receber, pagar, preço e custo ) |  | 2d | 2026-10-29 | 2026-10-31 |  | 82d |  | finish no earlier than 2026-10-31 | Romulo Silva; Eduardo Ramos | 32h | 4,940 |
| 140 | 1.14.3 | Virada - ( GO-Live ) |  | 1d | 2027-02-01 | 2027-02-01 |  | 0d |  | start no earlier than 2027-02-01 | Romulo Silva; Eduardo Ramos | 16h | 2,540 |
| 141 | 1.15 | **9. Operação Assistida e Estabilização** |  | 10d | 2027-02-02 | 2027-02-15 | 140 | 0d |  |  |  | 160h | 24,280 |
| 142 | 1.15.1 | Acompanhamento das Operações |  | 10d | 2027-02-02 | 2027-02-15 | 140 | 0d |  | finish no earlier than 2026-11-13 | Romulo Silva; Eduardo Ramos | 160h | 24,140 |
| 143 | 1.15.2 | Termo de Entrega para o Suporte | milestone | 0d | 2027-02-15 | 2027-02-15 | 142FF | 0d |  |  | Romulo Silva; Eduardo Ramos |  | 140 |
| 144 | 1.16 | **10. Estabilização Fiscal e Encerramento** |  | 5d | 2027-02-16 | 2027-02-22 | 141 | 0d |  |  |  | 80h | 12,140 |
| 145 | 1.16.1 | Acompanhamento Entregas Fiscais |  | 5d | 2027-02-16 | 2027-02-22 | 143 | 0d |  |  | Romulo Silva; Eduardo Ramos | 80h | 12,140 |

Notes:
- 138: Tarefas com um um pino próximo a eles são tarefas agendadas manualmente. Use-as quando você não quer que o Project mova uma tarefa. Voce também pode digitar texto livre nos campos de duração, início e encerramento ou deixar em branco se ainda não tem toda a informação.
- 142: Tarefas com um um pino próximo a eles são tarefas agendadas manualmente. Use-as quando você não quer que o Project mova uma tarefa. Voce também pode digitar texto livre nos campos de duração, início e encerramento ou deixar em branco se ainda não tem toda a informação.
